Schedule from MS Project, 2014-03-07 to 2014-07-03.

## Calendars

- Standard: Mon-Fri 08:00-12:00, 13:00-17:00; Sat-Sun off.

## Schedule

| ID | WBS | Task | Duration | Start | Finish | Predecessors | Total slack | Free slack |
| --- | --- | --- | --- | --- | --- | --- | --- | --- |
| 1 | 1 | **Naukanu Sailing School Projekt** | 85d | 2014-03-07 | 2014-07-03 |  | 0d |  |
| 2 | 1.1 | **1 Entwicklungsumgebung** | 3d | 2014-03-07 | 2014-03-11 |  | 0d |  |
| 3 | 1.1.1 | 1.1 Testsystem aufbauen | 1d | 2014-03-07 | 2014-03-07 |  | 0d |  |
| 4 | 1.1.2 | 1.2 Datenbank einrichten | 1d | 2014-03-10 | 2014-03-10 | 3 | 0d |  |
| 5 | 1.1.3 | 1.3 Entwicklungsumgebung testen | 1d | 2014-03-11 | 2014-03-11 | 4 | 0d |  |
| 6 | 1.2 | **2 Architektur** | 2d | 2014-03-12 | 2014-03-13 |  | 0d |  |
| 7 | 1.2.1 | 2.1 Erstellung der Projektstruktur | 1d | 2014-03-12 | 2014-03-12 | 5 | 0d |  |
| 8 | 1.2.2 | 2.2 CI-System aufbauen | 1d | 2014-03-13 | 2014-03-13 | 7 | 0d |  |
| 9 | 1.3 | 3 Erstellung Entitäten und Persistenzkomponenten | 5d | 2014-03-14 | 2014-03-20 | 8 | 0d |  |
| 10 | 1.4 | **4 Erstellung des Frontend** | 15d | 2014-03-21 | 2014-04-10 |  | 0d |  |
| 11 | 1.4.1 | 4.1 Konzeption | 3d | 2014-03-21 | 2014-03-25 | 9 | 0d |  |
| 12 | 1.4.2 | 4.2 Umsetzung | 12d | 2014-03-26 | 2014-04-10 | 11 | 0d |  |
| 13 | 1.5 | **5 Erstellung Rechnungsverwaltung** | 15d | 2014-04-11 | 2014-05-01 | 10 | 45d |  |
| 14 | 1.5.1 | **5.1 Rechnungsmodul** | 7.6d | 2014-04-11 | 2014-04-22 | 10 | 45d | 0d |
| 15 | 1.5.1.1 | **Erstellung Datenmodell** | 0.6d | 2014-04-11 | 2014-04-11 |  | 45d | 0d |
| 16 | 1.5.1.1.1 | Erstellung der Entität Invoice | 0.2d | 2014-04-11 | 2014-04-11 | 12 | 45d | 0d |
| 17 | 1.5.1.1.2 | Erstellung der Entität InvoiceItem | 0.2d | 2014-04-11 | 2014-04-11 | 16 | 45d | 0d |
| 18 | 1.5.1.1.3 | Erstellung der Mahnstufen | 0.2d | 2014-04-11 | 2014-04-11 | 17 | 45d |  |
| 19 | 1.5.1.2 | **Implementierung der Geschäftslogik** | 5d | 2014-04-11 | 2014-04-18 | 15 | 45d | 0d |
| 20 | 1.5.1.2.1 | Erstellung InvoiceActionModel | 3d | 2014-04-11 | 2014-04-16 | 17 | 45d | 0d |
| 21 | 1.5.1.2.2 | Erstellung InvoiceViewModel | 2d | 2014-04-16 | 2014-04-18 | 20 | 45d | 0d |
| 22 | 1.5.1.3 | **Implementierung View** | 2d | 2014-04-18 | 2014-04-22 | 19 | 45d |  |
| 23 | 1.5.1.3.1 | Erstellung der Invoice-Pages | 2d | 2014-04-18 | 2014-04-22 | 21 | 45d | 0d |
| 24 | 1.5.2 | **5.2 Gutschriftsmodul** | 7.4d | 2014-04-22 | 2014-05-01 | 14 | 45d |  |
| 25 | 1.5.2.1 | **Erstellung Datenmodell** | 0.4d | 2014-04-22 | 2014-04-22 |  | 45d | 0d |
| 26 | 1.5.2.1.1 | Erstellung der Enität Credit Voucher | 0.2d | 2014-04-22 | 2014-04-22 | 23 | 45d | 0d |
| 27 | 1.5.2.1.2 | Erstellung der Entität Credit VoucherItem | 0.2d | 2014-04-22 | 2014-04-22 | 26 | 45d | 0d |

| ID | WBS | Task | Duration | Start | Finish | Predecessors | Total slack | Free slack |
| --- | --- | --- | --- | --- | --- | --- | --- | --- |
| 28 | 1.5.2.2 | **Implementierung der Geschäftslogik** | 5d | 2014-04-23 | 2014-04-29 | 25 | 45d | 0d |
| 29 | 1.5.2.2.1 | Erstellung Credit VoucherActionModel | 3d | 2014-04-23 | 2014-04-25 | 27 | 45d | 0d |
| 30 | 1.5.2.2.2 | Erstellung Credit VoucherViewModel | 2d | 2014-04-28 | 2014-04-29 | 29 | 45d | 0d |
| 31 | 1.5.2.3 | **Implementierung View** | 2d | 2014-04-30 | 2014-05-01 | 28 | 45d |  |
| 32 | 1.5.2.3.1 | Erstellung der Credit Voucher-Pages | 2d | 2014-04-30 | 2014-05-01 | 30 | 45d |  |
| 33 | 1.6 | **6 Erstellung Kundenverwaltung** | 10d | 2014-04-11 | 2014-04-24 | 10 | 50d |  |
| 34 | 1.6.1 | **Erstellung Datenmodell** | 1d | 2014-04-11 | 2014-04-11 |  | 50d | 0d |
| 35 | 1.6.1.1 | Erstellung der Entität Customer | 0.2d | 2014-04-11 | 2014-04-11 | 12 | 50d | 0d |
| 36 | 1.6.1.2 | Erstellung der Entität CustomerItem | 0.2d | 2014-04-11 | 2014-04-11 | 35 | 50d | 0d |
| 37 | 1.6.1.3 | Erstellung der Entität Customer/Course | 0.2d | 2014-04-11 | 2014-04-11 | 36 | 50d | 0d |
| 38 | 1.6.1.4 | Erstellung der Entität Customer/Finance | 0.2d | 2014-04-11 | 2014-04-11 | 37 | 50d | 0d |
| 39 | 1.6.1.5 | Erstellung der Entiät Customer/Calendar Management | 0.2d | 2014-04-11 | 2014-04-11 | 38 | 50d | 0d |
| 40 | 1.6.2 | **Implementierung der Geschäftslogik** | 7d | 2014-04-14 | 2014-04-22 | 34 | 50d | 0d |
| 41 | 1.6.2.1 | Erstellung CustomerActionModel | 3d | 2014-04-14 | 2014-04-16 | 39 | 50d | 0d |
| 42 | 1.6.2.2 | Erstellung CustomerViewModel | 2d | 2014-04-17 | 2014-04-18 | 41 | 50d | 0d |
| 43 | 1.6.2.3 | Erstellung Verknüpfung Customer/Course/Finance/Calendar Management | 2d | 2014-04-21 | 2014-04-22 | 42 | 50d |  |
| 44 | 1.6.3 | **Implementierung View** | 2d | 2014-04-23 | 2014-04-24 | 40 | 50d |  |
| 45 | 1.6.3.1 | Erstellung der Customer-Pages | 2d | 2014-04-23 | 2014-04-24 | 41 | 50d |  |
| 46 | 1.7 | **7 Erstellung Mitarbeiterverwaltung** | 10d | 2014-04-11 | 2014-04-24 | 10 | 50d |  |
| 47 | 1.7.1 | **Erstellung Datenmodell** | 2d | 2014-04-11 | 2014-04-14 |  | 50d | 0d |
| 48 | 1.7.1.1 | Erstellung der Entität Staff | 1d | 2014-04-11 | 2014-04-11 | 12 | 50d | 0d |
| 49 | 1.7.1.2 | Erstellung der Entität StaffItem | 1d | 2014-04-14 | 2014-04-14 | 48 | 50d | 0d |
| 50 | 1.7.2 | **Implementierung der Geschäftslogik** | 6d | 2014-04-15 | 2014-04-22 | 47 | 50d | 0d |
| 51 | 1.7.2.1 | Erstellung StaffActionModel | 4d | 2014-04-15 | 2014-04-18 | 49 | 50d | 0d |
| 52 | 1.7.2.2 | Erstellung StaffViewModel | 2d | 2014-04-21 | 2014-04-22 | 51 | 50d | 0d |

| ID | WBS | Task | Duration | Start | Finish | Predecessors | Total slack |
| --- | --- | --- | --- | --- | --- | --- | --- |
| 53 | 1.7.3 | **Implementierung View** | 2d | 2014-04-23 | 2014-04-24 | 50 | 50d |
| 54 | 1.7.3.1 | Erstellung der Staff-Pages | 2d | 2014-04-23 | 2014-04-24 | 52 | 50d |
| 55 | 1.8 | **8 Erstellung Kursverwaltung** | 10d | 2014-04-11 | 2014-04-24 | 10 | 0d |
| 56 | 1.8.1 | **Erstellung Datenmodell** | 2d | 2014-04-11 | 2014-04-14 |  | 0d |
| 57 | 1.8.1.1 | Erstellung der Entität Course | 1d | 2014-04-11 | 2014-04-11 | 12 | 0d |
| 58 | 1.8.1.2 | Erstellung der Entität CourseItem | 1d | 2014-04-14 | 2014-04-14 | 57 | 0d |
| 59 | 1.8.2 | **Implementierung der Geschäftslogik** | 6d | 2014-04-15 | 2014-04-22 | 56 | 0d |
| 60 | 1.8.2.1 | Erstellung CourseActionModel | 4d | 2014-04-15 | 2014-04-18 | 58 | 0d |
| 61 | 1.8.2.2 | Erstellung CourseViewModel | 2d | 2014-04-21 | 2014-04-22 | 60 | 0d |
| 62 | 1.8.3 | **Implementierung View** | 2d | 2014-04-23 | 2014-04-24 | 59 | 0d |
| 63 | 1.8.3.1 | Erstellung der Course-Pages | 2d | 2014-04-23 | 2014-04-24 | 61 | 0d |
| 64 | 1.9 | **9 Erstellung Terminverwaltung** | 20d | 2014-04-25 | 2014-05-22 | 55 | 0d |
| 65 | 1.9.1 | **Erstellung Datenmodell** | 4d | 2014-04-25 | 2014-04-30 | 62 | 0d |
| 66 | 1.9.1.1 | Erstellung der Entität Calendar Management | 2d | 2014-04-25 | 2014-04-28 | 63 | 0d |
| 67 | 1.9.1.2 | Erstellung der Entität Calendar ManagementItem | 2d | 2014-04-29 | 2014-04-30 | 66 | 0d |
| 68 | 1.9.2 | **Implementierung der Geschäftslogik** | 13d | 2014-05-01 | 2014-05-19 | 65 | 0d |
| 69 | 1.9.2.1 | Erstellung Calendar ManagementActionModel | 7d | 2014-05-01 | 2014-05-09 | 67 | 0d |
| 70 | 1.9.2.2 | Erstellung Calendar ManagementViewModel | 6d | 2014-05-12 | 2014-05-19 | 69 | 0d |
| 71 | 1.9.3 | **Implementierung View** | 3d | 2014-05-20 | 2014-05-22 | 68 | 0d |
| 72 | 1.9.3.1 | Erstellung der Calendar Management-Pages | 3d | 2014-05-20 | 2014-05-22 | 70 | 0d |
| 73 | 1.10 | **10 Erstellung Materialverwaltung** | 10d | 2014-05-23 | 2014-06-05 | 64 | 0d |
| 74 | 1.10.1 | **Erstellung Datenmodell** | 2d | 2014-05-23 | 2014-05-26 | 71 | 0d |
| 75 | 1.10.1.1 | Erstellung der Entität Material | 1d | 2014-05-23 | 2014-05-23 | 72 | 0d |
| 76 | 1.10.1.2 | Erstellung der Entität MaterialItem | 1d | 2014-05-26 | 2014-05-26 | 75 | 0d |

| ID | WBS | Task | Duration | Start | Finish | Predecessors | Total slack |
| --- | --- | --- | --- | --- | --- | --- | --- |
| 77 | 1.10.2 | **Implementierung der Geschäftslogik** | 6d | 2014-05-27 | 2014-06-03 | 74 | 0d |
| 78 | 1.10.2.1 | Erstellung MaterialActionModel | 3d | 2014-05-27 | 2014-05-29 | 76 | 0d |
| 79 | 1.10.2.2 | Erstellung MaterialViewModel | 3d | 2014-05-30 | 2014-06-03 | 78 | 0d |
| 80 | 1.10.3 | **Implementierung View** | 2d | 2014-06-04 | 2014-06-05 | 77 | 0d |
| 81 | 1.10.3.1 | Erstellung der Material-Pages | 2d | 2014-06-04 | 2014-06-05 | 79 | 0d |
| 82 | 1.11 | 11 Dokumentation | 20d | 2014-06-06 | 2014-07-03 | 73 | 0d |
